# スケジュール_TWLSystemMenu

Schedule from MS Project, 2008-02-08 to 2008-07-10, A marks actual dates.
莉ｻ螟ｩ蝣よｪ蠑丈ｼ夂､ｾ

## Calendars

- 年中無休: Mon-Sun 08:00-12:00, 13:00-17:00.

## Resources

| Resource | Group |
| --- | --- |
| 宮本昌幸 | RED |
| 大江徹 | RED |
| 中島高伸 | RED |
| 吉岡照幸 | RED |
| 村上豊 | RED |
| 白井達広 | RED |
| 神川洋司 | RED |
| 佐藤雅樹 | RED |
| 三田健太朗 | RED |
| 水口裕基 | RED |
| 赤羽淳平 | RED |
| 西川猛司 | RED |
| 吉田光寿 | RED |
| 喜友名毅 | RED-HARD |
| 安達 洋明 | PSEG1 |
| 稲葉 公崇 | PSEG1 |
| 大島 洋一 | PSEG1 |
| 岡島 学 | PSEG1 |
| 奥畑 亮馬 | PSEG1 |
| 北瀬 裕丈 | PSEG1 |
| 白川 英一 | PSEG1 |
| 清木 昌 | PSEG1 |
| 照井 章生 | PSEG1 |
| 徳永 英治 | PSEG1 |
| 西本 隆 | PSEG1 |
| 橋本 英之 | PSEG1 |
| 畠本 稔 | PSEG1 |
| 廣瀬 和樹 | PSEG1 |
| 安本 吉孝 | PSEG1 |
| 矢田 裕人 | PSEG1 |
| 吉崎 浩二 | PSEG1 |
| Atheros | Atheros |
| BroadOn | BroadOn |
| 遠藤高志 | PSEG2 |
| 松島愛佑 | ＵＩＧ |
| 荒木 勉 | ＵＩＧ |
| 川瀬 智広 | ＵＩＧ |
| 河野裕之 | ＵＩＧ |
| 小野沢祐貴 | ＵＩＧ |
| ネットワーク開発部 | ネ開 |
| 斉藤潤一 | RED-HARD |
| 藤田僚平 | RED-HARD |
| 総務部 |  |
| 和田 |  |
| 中谷 |  |
| 知財部 |  |
| 桑原雅人 | RED-HARD |
| ？ |  |
| 正木義文 | ＵＩＧ |
| Buffalo外注 |  |
| NEC外注 |  |
| 製品技術部 |  |
| 田原明 | RED-HARD |
| 谷口和彦 | RED-HARD |
| 飯島 |  |
| 金子 |  |
| マリオクラブ |  |
| 派遣 |  |
| IS |  |

## Schedule

| ID | WBS | Task | Type | Duration | Start | Finish | Complete | Remaining | Total slack | Free slack | Constraint |
| --- | --- | --- | --- | --- | --- | --- | --- | --- | --- | --- | --- |
| 1 | 1 | **TS-board 3 納品開始** |  | 30d | 2008-02-13 | 2008-03-13 |  |  | 119d |  |  |
| 2 | 1.1 | 先行20台 | milestone | 1d | 2008-02-13 | 2008-02-13 |  |  | 148d |  | start no earlier than 2008-02-13 |
| 3 | 1.2 | 480台(BO:12/170/298) | milestone | 1d | 2008-03-13 | 2008-03-13 |  |  | 119d |  | start no earlier than 2008-03-13 |
| 4 | 2 | ワーキングモデル(10台 BO:0/7/3)納品予定 | milestone | 1d? | 2008-02-15 A | 2008-02-15 A | 100% |  |  |  | start no earlier than 2008-02-15 |
| 5 | 3 | **IS-TWL-DEBUGGER納品開始** |  | 121d | 2008-03-03 A | 2008-07-01 | 20% | 96.8d | 9d |  |  |
| 6 | 3.1 | 先行5台 | milestone | 1d | 2008-03-03 A | 2008-03-03 A | 100% |  |  |  | start no earlier than 2008-03-03 |
| 7 | 3.2 | 第一弾100台 | milestone | 1d | 2008-04-14 | 2008-04-14 |  |  | 87d |  | start no earlier than 2008-04-14 |
| 8 | 3.3 | 第二弾200台 | milestone | 1d | 2008-05-05 | 2008-05-05 |  |  | 66d |  | start no earlier than 2008-05-05 |
| 9 | 3.4 | 第三弾300台 | milestone | 1d | 2008-06-02 | 2008-06-02 |  |  | 38d |  | start no earlier than 2008-06-02 |
| 10 | 3.5 | 月産500台 | milestone | 1d | 2008-07-01 | 2008-07-01 |  |  | 9d |  | start no earlier than 2008-07-01 |
| 11 | 4 | **量産試作納品開始** |  | 93d | 2008-04-09 A | 2008-07-10 | 25% | 69.75d | 0d |  |  |
| 12 | 4.1 | ミニ量試200台 | milestone | 1d | 2008-04-09 A | 2008-04-09 A | 100% |  |  |  | start no earlier than 2008-04-09 |
| 13 | 4.2 | 量試1 600台 | milestone | 1d | 2008-05-01 | 2008-05-01 |  |  | 70d |  | start no earlier than 2008-05-01 |
| 14 | 4.3 | 量試2 600台 | milestone | 1d | 2008-06-04 | 2008-06-04 |  |  | 36d | 0d | start no earlier than 2008-06-04 |
| 15 | 4.4 | 量試3 600台 | milestone | 1d | 2008-07-10 | 2008-07-10 |  |  | 0d |  | start no earlier than 2008-07-10 |
| 16 | 5 | IS-TWL-CAPTURE試作品納品開始 | milestone | 1d? | 2008-04-01 | 2008-04-01 |  |  | 100d |  | start no earlier than 2008-04-01 |
| 18 | 6 | **TwlSDKリリースマイルストーン** |  | 75d | 2008-02-11 | 2008-04-25 |  |  | 76d |  |  |
| 19 | 6.1 | 5.0FC | milestone | 1d | 2008-03-25 | 2008-03-25 |  |  | 107d |  | start no earlier than 2008-03-25 |
| 20 | 6.2 | 5.0FC plus1 | milestone | 1d | 2008-04-04 | 2008-04-04 |  |  | 97d |  | start no earlier than 2008-04-04 |
| 21 | 6.3 | 5.0FC plus2 | milestone | 1d | 2008-04-25 | 2008-04-25 |  |  | 76d |  | start no earlier than 2008-04-25 |
| 22 | 6.4 | 5.0RC | milestone | 1d | 2008-02-11 | 2008-02-11 |  |  | 150d |  | start no earlier than 2008-02-11 |
| 23 | 6.5 | 5.0 Release | milestone | 1d | 2008-02-11 | 2008-02-11 |  |  | 150d |  | start no earlier than 2008-02-11 |
| 25 | 7 | **REDランチャー開発マイルストーン** |  | 76d | 2008-02-08 | 2008-04-23 |  |  | 78d |  |  |
| 26 | 7.1 | スタート | milestone | 1d | 2008-02-08 | 2008-02-08 |  |  | 104d | 2d | start no earlier than 2008-02-08 |
| 27 | 7.2 | 第1ステップ（2月末） | milestone | 1d | 2008-03-02 | 2008-03-02 |  |  | 103d | 13d | start no earlier than 2008-03-02 |
| 28 | 7.3 | 第2ステップ（3月中旬）→（4月上旬） | milestone | 1d | 2008-04-04 | 2008-04-04 |  |  | 91d | 0d | start no earlier than 2008-04-04 |
| 29 | 7.4 | 第3ステップ（3月末→4月下旬） FIX | milestone | 1d | 2008-04-23 | 2008-04-23 |  |  | 78d | 0d | start no earlier than 2008-04-23 |

| ID | WBS | Task | Duration | Start | Finish | Predecessors | Complete | Remaining | Total slack | Free slack | Constraint | Resources | Work | Actual work |
| --- | --- | --- | --- | --- | --- | --- | --- | --- | --- | --- | --- | --- | --- | --- |
| 31 | 8 | **汎用仕様** | 75d? | 2008-02-08 A | 2008-04-23 |  | 43% | 42.73d? | 79d |  |  |  | 3168h | 1342.4h |
| 32 | 8.1 | アプリのNintendoロゴ表示仕様 | 8d | 2008-02-11 A | 2008-02-20 A |  | 100% |  |  |  | finish no earlier than 2008-02-20 | 松島愛佑; 三田健太朗; 知財部 | 192h | 192h |
| 33 | 8.2 | **EURA表示** | 72d | 2008-02-11 A | 2008-04-23 |  | 44% | 40d | 79d |  |  |  | 1080h | 480h |
| 34 | 8.2.1 | NCL Fix | 25d | 2008-02-11 A | 2008-03-16 | 26, 27SF | 80% | 5d | 88d | 9d | finish no earlier than 2008-03-16 | 三田健太朗; 総務部; 松島愛佑 | 600h | 480h |
| 35 | 8.2.2 | NOA, NOE承認 | 20d | 2008-03-26 | 2008-04-23 | 34, 29SF |  |  | 79d |  | start no earlier than 2008-02-08 | 三田健太朗; 総務部; 松島愛佑 | 480h |  |
| 36 | 8.3 | **ペアレンタルコントロール** | 71d? | 2008-02-08 A | 2008-04-18 |  | 40% | 42.38d? | 83d |  |  |  | 1448h | 422.4h |
| 37 | 8.3.1 | 通信方式や通信内容に対する制限 | 50d? | 2008-02-08 A | 2008-04-17 |  | 80% | 10d? | 84d |  | start no earlier than 2008-02-08 | 三田健太朗 | 400h | 320h |
| 38 | 8.3.2 | レーティング以外の制御 | 16d | 2008-02-08 A | 2008-02-29 |  | 80% | 3.2d | 97d | 2d |  | 松島愛佑 | 128h | 102.4h |
| 39 | 8.3.3 | NOA,NOE承認 | 25d? | 2008-03-03 | 2008-04-06 | 38 |  |  | 95d |  | finish no earlier than 2008-04-06 | 三田健太朗; 総務部; 松島愛佑 | 600h |  |
| 40 | 8.3.4 | 秘密の質問項目 | 22d? | 2008-02-08 | 2008-03-10 |  |  |  | 122d |  | start no earlier than 2008-02-08 | 三田健太朗 | 176h |  |
| 41 | 8.3.5 | 質問を忘れた場合のサポートセンターコール | 18d? | 2008-03-26 | 2008-04-18 |  |  |  | 83d |  | finish no earlier than 2008-04-18 | 桑原雅人 | 144h |  |
| 42 | 8.4 | **SDに作成するフォルダ名** | 56d? | 2008-02-08 A | 2008-04-04 |  | 39% | 34.15d? | 98d |  |  |  | 448h | 248h |
| 43 | 8.4.1 | TWL正式名称を使えるかを確認 | 25d | 2008-02-29 | 2008-04-04 | 26, 28SF |  |  | 98d |  | start no earlier than 2008-02-08 | 三田健太朗 | 200h |  |
| 44 | 8.4.2 | パス名調査 | 1d? | 2008-02-08 A | 2008-02-08 A |  | 100% |  |  |  |  | 白井達広 | 8h | 8h |
| 45 | 8.4.3 | TWLでのフォルダ構成のたたき台 | 15d | 2008-02-11 A | 2008-03-02 A | 26, 27SF | 100% |  |  |  | start no earlier than 2008-02-08 | 三田健太朗; 吉岡照幸 | 240h | 240h |
| 47 | 9 | **ドキュメント** | 12d? | 2008-04-14 | 2008-04-25 |  |  |  | 74d |  |  |  | 80h |  |
| 48 | 9.1 | REDランチャーフロー | 4d | 2008-04-14 | 2008-04-17 |  |  |  | 74d | 0d | start no earlier than 2008-04-14 | 吉岡照幸 | 32h |  |
| 49 | 9.2 | アプリジャンプ | 2d | 2008-04-18 | 2008-04-21 | 48 |  |  | 74d | 0d | start no earlier than 2008-04-14 | 吉岡照幸 | 16h |  |
| 50 | 9.3 | NANDアクセス権 | 3d | 2008-04-22 | 2008-04-24 | 49 |  |  | 76d | 0d | start no earlier than 2008-04-14 | 吉岡照幸 | 24h |  |
| 51 | 9.4 | アプリ種別 | 1d? | 2008-04-25 | 2008-04-25 | 50 |  |  | 76d |  | start no earlier than 2008-04-14 | 吉岡照幸 | 8h |  |
| 53 | 10 | **REDシステムメニュー** | 85d? | 2008-02-08 A | 2008-05-02 |  | 79% | 17.49d? | 69d |  |  |  | 17080h | 13717.5h |
| 54 | 10.1 | **ランチャー** | 85d? | 2008-02-08 A | 2008-05-02 |  | 78% | 18.87d? | 69d |  |  |  | 14848h | 11553.5h |
| 55 | 10.1.1 | **ランチャー用ARM7コンポーネント** | 75d? | 2008-02-08 A | 2008-04-22 |  | 67% | 25d? | 79d |  |  |  | 24h | 16h |
| 56 | 10.1.1.1 | 実装 | 1d? | 2008-02-08 A | 2008-02-08 A |  | 100% |  |  |  |  | 吉岡照幸 | 8h | 8h |
| 57 | 10.1.1.2 | 中間マージ | 1d | 2008-04-15 A | 2008-04-15 A | 56 | 100% |  |  |  | finish no earlier than 2008-04-15 | 吉岡照幸 | 8h | 8h |
| 58 | 10.1.1.3 | 最終マージ | 1d | 2008-04-22 | 2008-04-22 | 57 |  |  | 79d |  | start no earlier than 2008-04-22 | 吉岡照幸 | 8h |  |
| 59 | 10.1.2 | Hot/Coldスタート判定 | 2d | 2008-02-11 A | 2008-02-12 A |  | 100% |  |  |  |  | 中島高伸; 吉田光寿 | 32h | 32h |
| 60 | 10.1.3 | RTC初期化 | 1d | 2008-02-11 A | 2008-02-11 A |  | 100% |  |  |  |  | 吉岡照幸 | 8h | 8h |
| 61 | 10.1.4 | 初回バックライトON | 1d | 2008-02-11 A | 2008-02-11 A |  | 100% |  |  |  |  | 中島高伸 | 8h | 8h |

| ID | WBS | Task | Duration | Start | Finish | Predecessors | Complete | Remaining | Total slack | Free slack | Constraint | Resources | Work | Actual work |
| --- | --- | --- | --- | --- | --- | --- | --- | --- | --- | --- | --- | --- | --- | --- |
| 62 | 10.1.5 | **TitleIDリスト作成** | 23d? | 2008-03-19 A | 2008-04-10 A |  | 100% |  |  |  |  |  | 24h | 24h |
| 63 | 10.1.5.1 | 実装 | 1d? | 2008-03-19 A | 2008-03-19 A |  | 100% |  |  |  | start no earlier than 2008-03-19 | 吉田光寿 | 8h | 8h |
| 64 | 10.1.5.2 | 修正および仕様改定 | 2d | 2008-04-09 A | 2008-04-10 A |  | 100% |  |  |  | finish no earlier than 2008-04-10 | 吉田光寿 | 16h | 16h |
| 65 | 10.1.6 | HWリセット、電源OFF処理 | 1d? | 2008-03-29 A | 2008-03-29 A | 334 | 100% |  |  |  |  |  |  |  |
| 66 | 10.1.7 | **スリープ処理** | 56d? | 2008-02-08 A | 2008-04-03 |  | 50% | 28d? | 98d |  |  |  | 16h | 8h |
| 67 | 10.1.7.1 | 実装 | 1d? | 2008-04-03 A | 2008-04-03 A |  | 100% |  |  |  |  | 中島高伸 | 8h | 8h |
| 68 | 10.1.7.2 | デバッガでスリープを有効にすると電源が落ちる対策 | 1d? | 2008-02-08 | 2008-02-08 |  |  |  | 153d |  |  | 中島高伸 | 8h |  |
| 69 | 10.1.8 | **アプリリスト取得** | 71d | 2008-02-08 A | 2008-04-18 |  | 60% | 28.4d | 81.2d |  |  |  | 40h | 24h |
| 70 | 10.1.8.1 | 実装 | 3d | 2008-02-08 A | 2008-02-12 A |  | 100% |  |  |  |  | 吉田光寿 | 24h | 24h |
| 71 | 10.1.8.2 | ブラッシュアップ | 2d | 2008-04-17 | 2008-04-18 | 103 |  |  | 81.2d | 0d | start no earlier than 2008-04-14 | 吉田光寿 | 16h |  |
| 72 | 10.1.9 | **バックライト輝度の値、段階** | 22d? | 2008-02-08 A | 2008-02-29 A |  | 100% |  |  |  |  |  | 360h | 360h |
| 73 | 10.1.9.1 | 上限、下限決定 | 9d | 2008-02-08 A | 2008-02-20 A |  | 100% |  |  |  | start no earlier than 2008-02-08 | 斉藤潤一; 喜友名毅 | 144h | 144h |
| 74 | 10.1.9.2 | 段階数、各輝度レベル決定 | 9d | 2008-02-08 A | 2008-02-20 A |  | 100% |  |  |  | start no earlier than 2008-02-08 | 斉藤潤一; 喜友名毅 | 144h | 144h |
| 75 | 10.1.9.3 | UIG承認 | 7d? | 2008-02-21 A | 2008-02-29 A | 73, 74 | 100% |  |  |  | start no earlier than 2008-02-21 | 松島愛佑 | 56h | 56h |
| 76 | 10.1.9.4 | 仮実装 | 1d? | 2008-02-08 A | 2008-02-08 A |  | 100% |  |  |  | start no earlier than 2008-02-08 | 吉岡照幸 | 8h | 8h |
| 77 | 10.1.9.5 | 改定 | 1d? | 2008-02-15 A | 2008-02-15 A |  | 100% |  |  |  |  | 中島高伸 | 8h | 8h |
| 78 | 10.1.10 | **TMPフォルダクリーン** | 44d? | 2008-03-11 A | 2008-04-23 |  | 50% | 22d? | 78d |  |  | 吉田光寿 | 272h | 16h |
| 79 | 10.1.10.1 | TMP（ESのバグのためImport）フォルダクリーン | 1d | 2008-03-11 A | 2008-03-11 A | 26, 27SF | 100% |  |  |  |  | 吉田光寿 | 8h | 8h |
| 80 | 10.1.10.2 | 元に戻す | 1d? | 2008-04-23 | 2008-04-23 | 325 |  |  | 78d |  | start no earlier than 2008-04-18 | 吉田光寿 | 8h |  |
| 81 | 10.1.11 | **本体設定データ、HW情報のロード** | 26d? | 2008-03-24 A | 2008-04-18 |  | 89% | 2.89d? | 83d |  |  |  | 72h | 64h |
| 82 | 10.1.11.1 | 仕様 | 6d? | 2008-03-24 A | 2008-03-31 A |  | 100% |  |  |  |  | 吉岡照幸 | 48h | 48h |
| 83 | 10.1.11.2 | 実装 | 2d? | 2008-04-01 A | 2008-04-02 A | 82 | 100% |  |  |  |  | 吉岡照幸 | 16h | 16h |
| 84 | 10.1.11.3 | 顔写真データ削除 | 1d | 2008-04-18 | 2008-04-18 |  |  |  | 83d |  | finish no earlier than 2008-04-18 | 吉岡照幸 | 8h |  |
| 85 | 10.1.12 | **共有フォントの仕様** | 69d? | 2008-02-08 | 2008-04-16 |  |  |  | 85d |  |  |  | 112h |  |
| 86 | 10.1.12.1 | 仕様 | 5d? | 2008-04-07 | 2008-04-11 |  |  |  | 88d |  | start no earlier than 2008-04-07 | 吉岡照幸; 松島愛佑 | 80h |  |

| ID | WBS | Task | Duration | Start | Finish | Predecessors | Complete | Remaining | Total slack | Free slack | Constraint | Resources | Work | Actual work |
| --- | --- | --- | --- | --- | --- | --- | --- | --- | --- | --- | --- | --- | --- | --- |
| 87 | 10.1.12.2 | **ランチャー起動速度計測** | 69d? | 2008-02-08 | 2008-04-16 |  |  |  | 85d |  |  |  | 32h |  |
| 88 | 10.1.12.2.1 | ＵＩＧランチャーサイズ見積もり | 1d? | 2008-02-08 | 2008-02-08 |  |  |  | 153d |  |  | 荒木 勉 | 8h |  |
| 89 | 10.1.12.2.2 | フォントへの署名付加 | 1d | 2008-04-14 | 2008-04-14 | 249 |  |  | 78d | 0d | start no earlier than 2008-04-11 | 西川猛司 | 8h |  |
| 90 | 10.1.12.2.3 | フォント署名あり／なしでの計測 | 2d | 2008-04-15 | 2008-04-16 | 89 |  |  | 78d | 0d | start no earlier than 2008-04-11 | 西川猛司 | 16h |  |
| 91 | 10.1.13 | **NANDアクセス制限** | 53d? | 2008-02-08 A | 2008-03-31 |  | 89% | 5.78d? | 101d |  |  |  | 1176h | 1080h |
| 92 | 10.1.13.1 | **仕様策定** | 53d? | 2008-02-08 A | 2008-03-31 |  | 76% | 12.98d? | 101d |  |  |  | 688h | 592h |
| 93 | 10.1.13.1.1 | 基本仕様 | 37d? | 2008-02-08 A | 2008-03-31 A |  | 100% |  |  |  | start no earlier than 2008-02-08 | 吉岡照幸; 吉崎 浩二 | 592h | 592h |
| 94 | 10.1.13.1.2 | shared2の運用方針 | 12d? | 2008-02-14 | 2008-02-29 |  |  |  | 132d |  | finish no earlier than 2008-02-29 | 吉岡照幸 | 96h |  |
| 95 | 10.1.13.2 | **実装** | 49d | 2008-02-08 A | 2008-03-27 A |  | 100% |  |  |  |  |  | 488h | 488h |
| 96 | 10.1.13.2.1 | マウント情報セット | 25d | 2008-02-11 A | 2008-03-16 A | 26, 28SF | 100% |  |  |  | finish no earlier than 2008-02-29 | 吉岡照幸 | 200h | 200h |
| 97 | 10.1.13.2.2 | FSライブラリの対応 | 34d | 2008-02-11 A | 2008-03-27 A | 26, 28SF | 100% |  |  |  | start no earlier than 2008-02-08 | 吉崎 浩二 | 272h | 272h |
| 98 | 10.1.13.2.3 | NAMライブラリの対応 | 2d | 2008-02-08 A | 2008-02-11 A |  | 100% |  |  |  |  | 畠本 稔 | 16h | 16h |
| 99 | 10.1.14 | **アプリロード** | 69d? | 2008-02-08 A | 2008-04-16 |  | 41% | 40.54d? | 85d |  |  |  | 64h | 26.4h |
| 100 | 10.1.14.1 | 基本実装 | 3d | 2008-02-08 A | 2008-02-12 A |  | 100% |  |  |  |  | 吉田光寿 | 24h | 24h |
| 101 | 10.1.14.2 | **アプリロード速度チューニング** | 69d? | 2008-02-08 A | 2008-04-16 |  | 6% | 64.86d? | 85d |  |  |  | 40h | 2.4h |
| 102 | 10.1.14.2.1 | 基本アルゴリズム検討・実装 | 1d? | 2008-02-08 A | 2008-02-08 |  | 30% | 0.7d? | 153d |  |  | 村上豊 | 8h | 2.4h |
| 103 | 10.1.14.2.2 | ランチャー組み込み | 4d | 2008-04-11 | 2008-04-16 |  |  |  | 81.2d | 0d | start no earlier than 2008-04-11 | 吉田光寿 | 32h |  |
| 104 | 10.1.15 | **アプリ認証** | 59d? | 2008-02-11 A | 2008-04-09 A |  | 100% |  |  |  |  |  | 512h | 512h |
| 105 | 10.1.15.1 | AESデコード | 4d? | 2008-04-04 A | 2008-04-09 A |  | 100% |  |  |  | finish no earlier than 2008-04-09 | 吉田光寿 | 32h | 32h |
| 106 | 10.1.15.2 | **ROMヘッダ署名認証** | 33d? | 2008-02-11 A | 2008-03-14 A |  | 100% |  |  |  |  |  | 480h | 480h |
| 107 | 10.1.15.2.1 | カードアプリ | 15d | 2008-02-11 A | 2008-02-29 A | 26, 27SF | 100% |  |  |  | finish no earlier than 2008-02-22 | 吉田光寿 | 120h | 120h |
| 108 | 10.1.15.2.2 | NANDアプリ | 15d | 2008-02-11 A | 2008-03-02 A | 26, 27SF | 100% |  |  |  | finish no earlier than 2008-02-22 | 吉田光寿 | 120h | 120h |
| 109 | 10.1.15.2.3 | TMPブートアプリ | 10d? | 2008-02-18 A | 2008-03-02 A | 26, 27SF | 100% |  |  |  | finish no earlier than 2008-03-02 | 吉田光寿 | 80h | 80h |
| 110 | 10.1.15.2.4 | NTRアプリ（PictChat,DS-DSプレイ） | 20d? | 2008-02-18 A | 2008-03-14 A | 26, 27SF | 100% |  |  |  | finish no earlier than 2008-03-14 | 吉田光寿 | 160h | 160h |

| ID | WBS | Task | Duration | Start | Finish | Predecessors | Complete | Remaining | Total slack | Constraint | Resources | Work | Actual work |
| --- | --- | --- | --- | --- | --- | --- | --- | --- | --- | --- | --- | --- | --- |
| 111 | 10.1.16 | **鍵の引渡し** | 26d? | 2008-03-06 A | 2008-03-31 A |  | 100% |  |  |  |  | 176h | 176h |
| 112 | 10.1.16.1 | 仕様 | 18d? | 2008-03-06 A | 2008-03-31 A |  | 100% |  |  | finish no earlier than 2008-03-10 | 吉岡照幸 | 144h | 144h |
| 113 | 10.1.16.2 | **実装** | 3d | 2008-03-24 A | 2008-03-26 A |  | 100% |  |  |  |  | 32h | 32h |
| 114 | 10.1.16.2.1 | AES鍵・AES種引渡し | 3d | 2008-03-24 A | 2008-03-26 A |  | 100% |  |  |  | 吉岡照幸 | 24h | 24h |
| 115 | 10.1.16.2.2 | ハードウェアAESスロット設定・クリア | 1d | 2008-03-24 A | 2008-03-24 A |  | 100% |  |  |  | 吉岡照幸 | 8h | 8h |
| 116 | 10.1.17 | **アプリ起動** | 71d? | 2008-02-08 A | 2008-04-18 |  | 85% | 10.78d? | 83d |  |  | 1576h | 1339.2h |
| 117 | 10.1.17.1 | 基本実装 | 1d? | 2008-02-08 A | 2008-02-08 A |  | 100% |  |  |  | 中島高伸 | 8h | 8h |
| 118 | 10.1.17.2 | カード活線挿抜可否 | 15d | 2008-02-08 A | 2008-02-28 A |  | 100% |  |  |  | 中島高伸 | 120h | 120h |
| 119 | 10.1.17.3 | SDカードアクセス可否 | 15d | 2008-02-11 A | 2008-02-29 A |  | 100% |  |  |  | 中島高伸 | 120h | 120h |
| 120 | 10.1.17.4 | Codecモード切替 | 15d | 2008-02-11 A | 2008-03-02 A |  | 100% |  |  |  | 中島高伸 | 120h | 120h |
| 121 | 10.1.17.5 | SCFGレジスタ設定・ロック | 15d | 2008-02-11 A | 2008-03-02 A |  | 100% |  |  |  | 中島高伸 | 120h | 120h |
| 122 | 10.1.17.6 | アプリ再配置 | 3d | 2008-02-13 A | 2008-02-15 A | 100 | 100% |  |  |  | 吉田光寿 | 24h | 24h |
| 123 | 10.1.17.7 | カード電源状態 | 15d | 2008-02-08 | 2008-02-28 |  |  |  | 133d |  | 赤羽淳平 | 120h |  |
| 124 | 10.1.17.8 | 本体設定への起動アプリ情報保存（インデックス、プラットホームコード、TitleID） | 1d? | 2008-04-01 A | 2008-04-01 A |  | 100% |  |  | start no earlier than 2008-04-01 | 吉岡照幸 | 8h | 8h |
| 125 | 10.1.17.9 | **メモリクリア** | 4d | 2008-02-08 A | 2008-02-11 A |  | 100% |  |  |  |  | 48h | 48h |
| 126 | 10.1.17.9.1 | 基本ルーチン | 2d | 2008-02-08 A | 2008-02-11 A |  | 100% |  |  |  | 中島高伸 | 16h | 16h |
| 127 | 10.1.17.9.2 | NTRアプリのクリア範囲 | 1d | 2008-02-08 A | 2008-02-08 A |  | 100% |  |  |  | 中島高伸; 吉田光寿 | 16h | 16h |
| 128 | 10.1.17.9.3 | TWLアプリのクリア範囲 | 1d | 2008-02-08 A | 2008-02-08 A |  | 100% |  |  |  | 中島高伸; 吉田光寿 | 16h | 16h |
| 129 | 10.1.17.10 | **レジスタクリア** | 61d | 2008-02-18 A | 2008-04-18 |  | 80% | 12.2d | 83d |  |  | 584h | 467.2h |
| 130 | 10.1.17.10.1 | 各ハード担当者にクリアする領域を洗い出してもらう | 43d | 2008-02-18 A | 2008-04-16 | 26 | 80% | 8.6d | 85d | finish no earlier than 2008-04-16 | 吉岡照幸 | 344h | 275.2h |
| 131 | 10.1.17.10.2 | クリア処理実装 | 30d | 2008-03-10 A | 2008-04-18 |  | 80% | 6d | 83d | finish no earlier than 2008-04-18 | 中島高伸 | 240h | 192h |
| 132 | 10.1.17.11 | **NTRアプリ起動** | 25d | 2008-02-11 A | 2008-03-06 A |  | 100% |  |  |  |  | 304h | 304h |
| 133 | 10.1.17.11.1 | NTRモード切替 | 19d | 2008-02-11 A | 2008-03-06 A | 125FF, 129FF, 28SF | 100% |  |  |  | 中島高伸 | 152h | 152h |
| 134 | 10.1.17.11.2 | NTR無線パッチ | 19d | 2008-02-11 A | 2008-03-06 A | 26, 28SF | 100% |  |  | start no earlier than 2008-02-08 | 中島高伸 | 152h | 152h |

| ID | WBS | Task | Duration | Start | Finish | Predecessors | Complete | Remaining | Total slack | Constraint | Resources | Work | Actual work |
| --- | --- | --- | --- | --- | --- | --- | --- | --- | --- | --- | --- | --- | --- |
| 135 | 10.1.18 | **NTRアプリのR4対策** | 75d? | 2008-02-08 A | 2008-04-23 |  | 57% | 32.59d? | 79d |  |  | 1376h | 1084h |
| 136 | 10.1.18.1 | どのレベルでやるかの方針決定 | 44d | 2008-02-11 A | 2008-04-10 A | 26, 27SF | 100% |  |  | start no earlier than 2008-02-11 | 谷口和彦; 宮本昌幸; 村上豊 | 1056h | 1056h |
| 137 | 10.1.18.2 | 仕様 | 1d? | 2008-02-08 A | 2008-02-08 A |  | 100% |  |  |  | 村上豊 | 8h | 8h |
| 138 | 10.1.18.3 | **実装** | 75d? | 2008-02-08 A | 2008-04-23 |  | 6% | 70.19d? | 79d |  |  | 312h | 20h |
| 139 | 10.1.18.3.1 | 基本アルゴリズム実装 | 1d? | 2008-02-08 A | 2008-02-08 A |  | 100% |  |  |  | 村上豊 | 8h | 8h |
| 140 | 10.1.18.3.2 | ダイジェストリスト作成 | 3d | 2008-03-26 A | 2008-04-23 | 26, 29SF | 50% | 1.5d | 79d |  | 村上豊 | 24h | 12h |
| 141 | 10.1.18.3.3 | TWL側実装 | 35d | 2008-03-05 | 2008-04-23 | 26, 29SF |  |  | 79d |  | 村上豊 | 280h |  |
| 142 | 10.1.19 | **アプリジャンプ** | 76d? | 2008-02-08 A | 2008-04-23 |  | 63% | 28.25d? | 78d |  |  | 1472h | 1068.72h |
| 143 | 10.1.19.1 | **仕様** | 64d? | 2008-02-08 A | 2008-04-11 |  | 66% | 21.72d? | 90d |  |  | 488h | 322.4h |
| 144 | 10.1.19.1.1 | 仕様案策定 | 19d? | 2008-02-08 A | 2008-03-05 A |  | 100% |  |  | finish no earlier than 2008-03-05 | 吉岡照幸 | 152h | 152h |
| 145 | 10.1.19.1.2 | 仕様案アンケート | 4d | 2008-03-06 A | 2008-03-11 A | 144 | 100% |  |  | start no earlier than 2008-03-06 | 三田健太朗 | 32h | 32h |
| 146 | 10.1.19.1.3 | 仕様FIX | 23d | 2008-03-12 A | 2008-04-11 | 145 | 10% | 20.7d | 90d | finish no earlier than 2008-04-11 | 吉岡照幸 | 184h | 18.4h |
| 147 | 10.1.19.1.4 | ファイル関連付けアプリ起動をやるかやらないか？ | 15d | 2008-02-11 A | 2008-03-02 A | 26, 27SF | 100% |  |  |  | 吉岡照幸 | 120h | 120h |
| 148 | 10.1.19.2 | **実装** | 76d? | 2008-02-08 A | 2008-04-23 |  | 98% | 1.77d? | 78d |  |  | 768h | 746.32h |
| 149 | 10.1.19.2.1 | アプリ間パラメータ、ランチャーパラメータ | 5d | 2008-02-08 A | 2008-02-14 A |  | 100% |  |  |  | 吉田光寿 | 40h | 40h |
| 150 | 10.1.19.2.2 | NTRモードからのアプリジャンプブロック | 1d? | 2008-02-08 A | 2008-02-08 A |  | 100% |  |  |  | 吉岡照幸 | 8h | 8h |
| 151 | 10.1.19.2.3 | **ノーマルジャンプ** | 73d | 2008-02-11 A | 2008-04-23 |  | 97% | 2.35d | 78d |  | 吉田光寿 | 672h | 650.32h |
| 152 | 10.1.19.2.3.1 | 未ロード状態のアプリ起動 | 15d | 2008-02-11 A | 2008-03-02 A | 26, 27SF | 100% |  |  |  | 吉田光寿 | 120h | 120h |
| 153 | 10.1.19.2.3.2 | NANDのImport（本来はTMP）フォルダに一時格納された状態のアプリ起動 | 15d | 2008-02-11 A | 2008-03-02 A | 26, 27SF | 100% |  |  |  | 吉田光寿 | 120h | 120h |
| 154 | 10.1.19.2.3.3 | ImportフォルダからTMPフォルダへの一時格納場所変更（ES待ち） | 1d | 2008-04-23 | 2008-04-23 | 325 |  |  | 78d | finish no earlier than 2008-04-18 | 吉田光寿 | 8h |  |
| 155 | 10.1.19.2.4 | **TMPジャンプ** | 15d? | 2008-02-08 A | 2008-02-22 A |  | 100% |  |  |  |  | 48h | 48h |
| 156 | 10.1.19.2.4.1 | TWLアプリ | 1d? | 2008-02-08 A | 2008-02-08 A |  | 100% |  |  |  | 吉田光寿 | 8h | 8h |
| 157 | 10.1.19.2.4.2 | NTRアプリ | 5d? | 2008-02-18 A | 2008-02-22 A |  | 100% |  |  | start no earlier than 2008-02-18 | 吉田光寿 | 40h | 40h |
| 158 | 10.1.19.3 | 特許調査 | 27d? | 2008-03-06 | 2008-04-11 |  |  |  | 90d | finish no earlier than 2008-04-11 | 知財部 | 216h |  |

| ID | WBS | Task | Duration | Start | Finish | Predecessors | Complete | Remaining | Total slack | Constraint | Resources | Work | Actual work |
| --- | --- | --- | --- | --- | --- | --- | --- | --- | --- | --- | --- | --- | --- |
| 159 | 10.1.20 | **無線** | 71d? | 2008-02-08 A | 2008-04-18 |  | 75% | 18.02d? | 83d |  |  | 2240h | 1840h |
| 160 | 10.1.20.1 | WiFiエミュレーション | 21d | 2008-02-08 A | 2008-03-07 A | 26, 27SF | 100% |  |  |  | 大江徹; 水口裕基 | 336h | 336h |
| 161 | 10.1.20.2 | **新無線ファームロード** | 71d? | 2008-02-08 A | 2008-04-18 |  | 65% | 24.67d? | 83d |  |  | 1456h | 1064h |
| 162 | 10.1.20.2.1 | **仕様** | 53d? | 2008-02-08 A | 2008-03-31 A |  | 100% |  |  |  |  | 656h | 656h |
| 163 | 10.1.20.2.1.1 | ロード仕様 | 1d? | 2008-02-08 A | 2008-02-08 A |  | 100% |  |  |  | 大江徹; 佐藤雅樹 | 16h | 16h |
| 164 | 10.1.20.2.1.2 | アップデートを考慮したNANDへの格納仕様 | 3d | 2008-02-08 A | 2008-02-12 A |  | 100% |  |  |  | 大江徹; 吉岡照幸 | 48h | 48h |
| 165 | 10.1.20.2.1.3 | ランチャーによる固定データロード有無 | 37d? | 2008-02-08 A | 2008-03-31 A |  | 100% |  |  | start no earlier than 2008-02-08 | 大江徹; 佐藤雅樹 | 592h | 592h |
| 166 | 10.1.20.2.2 | **実装** | 71d? | 2008-02-08 A | 2008-04-18 |  | 51% | 34.79d? | 83d |  |  | 800h | 408h |
| 167 | 10.1.20.2.2.1 | 無線ライブラリ | 12d? | 2008-02-08 A | 2008-02-25 A |  | 100% |  |  | start no earlier than 2008-02-08 | 佐藤雅樹 | 96h | 96h |
| 168 | 10.1.20.2.2.2 | ランチャー仮実装 | 15d | 2008-02-11 A | 2008-03-02 A | 26, 27SF | 100% |  |  | start no earlier than 2008-02-08 | 宮本昌幸 | 120h | 120h |
| 169 | 10.1.20.2.2.3 | ランチャー本実装 | 5d? | 2008-04-04 | 2008-04-10 | 311 |  |  | 91d | start no earlier than 2008-03-10 | 宮本昌幸 | 40h |  |
| 170 | 10.1.20.2.2.4 | ダミーROMヘッダ作成ツール | 1d | 2008-02-08 A | 2008-02-08 A |  | 100% |  |  |  | 宮本昌幸 | 8h | 8h |
| 171 | 10.1.20.2.2.5 | **ファーム** | 71d? | 2008-02-08 A | 2008-04-18 |  | 30% | 49.59d? | 83d |  |  | 504h | 152h |
| 172 | 10.1.20.2.2.5.1 | ファーム作成 | 19d? | 2008-02-08 A | 2008-03-05 A |  | 100% |  |  | finish no earlier than 2008-03-05 | Atheros | 152h | 152h |
| 173 | 10.1.20.2.2.5.2 | ブラッシュアップ | 44d? | 2008-02-19 | 2008-04-18 |  |  |  | 83d | finish no earlier than 2008-04-18 | Atheros | 352h |  |
| 174 | 10.1.20.2.2.6 | **NAND保存フォーマット** | 15d? | 2008-02-25 A | 2008-03-10 A |  | 100% |  |  |  |  | 32h | 32h |
| 175 | 10.1.20.2.2.6.1 | 旧フォーマット実装 | 2d? | 2008-02-25 A | 2008-02-26 A |  | 100% |  |  |  | 佐藤雅樹 | 16h | 16h |
| 176 | 10.1.20.2.2.6.2 | 新フォーマット実装 | 2d | 2008-03-07 A | 2008-03-10 A |  | 100% |  |  | start no earlier than 2008-03-07 | 佐藤雅樹 | 16h | 16h |
| 177 | 10.1.20.3 | **無線終端処理** | 29d? | 2008-02-08 A | 2008-03-07 |  | 96% | 1.26d? | 125d |  |  | 352h | 344h |
| 178 | 10.1.20.3.1 | 仕様 | 21d? | 2008-02-08 A | 2008-03-07 A |  | 100% |  |  |  | 大江徹; 佐藤雅樹 | 336h | 336h |
| 179 | 10.1.20.3.2 | 無線ライブラリ | 1d? | 2008-02-08 A | 2008-02-08 A |  | 100% |  |  |  | 佐藤雅樹 | 8h | 8h |
| 180 | 10.1.20.3.3 | ランチャー実装 | 1d? | 2008-02-08 | 2008-02-08 |  |  |  | 153d |  | 佐藤雅樹 | 8h |  |
| 181 | 10.1.20.4 | **無線ON/OFFフラグ制御** | 8d? | 2008-04-04 A | 2008-04-11 A |  | 100% |  |  |  |  | 48h | 48h |
| 182 | 10.1.20.4.1 | 仕様 | 5d? | 2008-04-04 A | 2008-04-10 A |  | 100% |  |  | finish no earlier than 2008-04-10 | 大江徹 | 40h | 40h |
| 183 | 10.1.20.4.2 | 実装 | 1d | 2008-04-11 A | 2008-04-11 A | 182 | 100% |  |  |  | 吉岡照幸 | 8h | 8h |

| ID | WBS | Task | Duration | Start | Finish | Predecessors | Complete | Remaining | Total slack | Free slack | Constraint | Resources | Work | Actual work |
| --- | --- | --- | --- | --- | --- | --- | --- | --- | --- | --- | --- | --- | --- | --- |
| 184 | 10.1.20.5 | **無線LED制御** | 8d? | 2008-04-04 A | 2008-04-11 A |  | 100% |  |  |  |  |  | 48h | 48h |
| 185 | 10.1.20.5.1 | 仕様 | 5d? | 2008-04-04 A | 2008-04-10 A |  | 100% |  |  |  | finish no earlier than 2008-04-10 | 大江徹 | 40h | 40h |
| 186 | 10.1.20.5.2 | 実装 | 1d | 2008-04-11 A | 2008-04-11 A | 185 | 100% |  |  |  |  | 吉岡照幸 | 8h | 8h |
| 187 | 10.1.21 | **バナー** | 36d? | 2008-02-08 A | 2008-03-14 A |  | 100% |  |  |  |  |  | 784h | 784h |
| 188 | 10.1.21.1 | **仕様** | 8d | 2008-02-08 A | 2008-02-15 A |  | 100% |  |  |  |  |  | 288h | 288h |
| 189 | 10.1.21.1.1 | TWLバナー | 6d | 2008-02-08 A | 2008-02-15 A | 26, 28SF | 100% |  |  |  |  | 吉岡照幸; 川瀬 智広; 荒木 勉 | 144h | 144h |
| 190 | 10.1.21.1.2 | サブバナー | 6d | 2008-02-08 A | 2008-02-15 A | 26, 28SF | 100% |  |  |  |  | 吉岡照幸; 川瀬 智広; 荒木 勉 | 144h | 144h |
| 191 | 10.1.21.2 | **実装** | 33d? | 2008-02-11 A | 2008-03-14 A |  | 100% |  |  |  |  |  | 496h | 496h |
| 192 | 10.1.21.2.1 | バナードライバ | 15d | 2008-02-11 A | 2008-03-02 A | 26, 27SF | 100% |  |  |  |  | 吉田光寿 | 120h | 120h |
| 193 | 10.1.21.2.2 | サブバナー | 17d? | 2008-02-21 A | 2008-03-14 A |  | 100% |  |  |  | start no earlier than 2008-02-21 | 吉田光寿 | 136h | 136h |
| 194 | 10.1.21.2.3 | サブバナーファイル（FSレイヤ） | 15d | 2008-02-11 A | 2008-03-02 A | 26, 27SF | 100% |  |  |  |  | 畠本 稔; 吉崎 浩二 | 240h | 240h |
| 195 | 10.1.22 | **活線挿抜** | 85d? | 2008-02-08 A | 2008-05-02 |  | 68% | 27.29d? | 69d |  |  |  | 2992h | 1955.2h |
| 196 | 10.1.22.1 | **活線挿抜アルゴリズムをFIX** | 68d? | 2008-02-11 A | 2008-04-18 |  | 70% | 20.4d? | 69d | 2d |  |  | 832h | 582.4h |
| 197 | 10.1.22.1.1 | コードの整理 | 50d | 2008-02-11 A | 2008-04-18 | 26, 27SF | 72% | 14d | 69d |  | finish no earlier than 2008-04-18 | 赤羽淳平 | 400h | 288h |
| 198 | 10.1.22.1.2 | 挿抜負荷耐性 | 50d | 2008-02-11 A | 2008-04-18 | 26, 27SF | 74% | 13.2d | 69d |  | finish no earlier than 2008-04-18 | 赤羽淳平 | 400h | 294.4h |
| 199 | 10.1.22.1.3 | エラー処理 | 1d? | 2008-04-14 | 2008-04-14 |  |  |  | 70d | 0d | finish no earlier than 2008-04-14 | 赤羽淳平 | 8h |  |
| 200 | 10.1.22.1.4 | **Finalize処理** | 3d? | 2008-04-15 | 2008-04-17 |  |  |  | 70d |  |  |  | 24h |  |
| 201 | 10.1.22.1.4.1 | 仕様策定・フロー作成 | 1d? | 2008-04-15 | 2008-04-15 | 199 |  |  | 70d | 0d | start no earlier than 2008-04-14 | 赤羽淳平 | 8h |  |
| 202 | 10.1.22.1.4.2 | 実装 | 2d | 2008-04-16 | 2008-04-17 | 201 |  |  | 70d | 0d |  | 赤羽淳平 | 16h |  |
| 203 | 10.1.22.2 | **ロード** | 85d? | 2008-02-08 A | 2008-05-02 |  | 69% | 26.06d? | 69d |  |  |  | 1592h | 1104h |
| 204 | 10.1.22.2.1 | NTRカード対応 | 15d | 2008-02-11 A | 2008-03-02 A | 26, 27SF | 100% |  |  |  |  | 赤羽淳平 | 120h | 120h |
| 205 | 10.1.22.2.2 | TWLカード対応 | 15d | 2008-03-13 A | 2008-04-02 A | 26, 27SF | 100% |  |  |  | finish no earlier than 2008-04-02 | 赤羽淳平 | 120h | 120h |
| 206 | 10.1.22.2.3 | カードType1,Type2対応 | 15d | 2008-02-11 A | 2008-03-02 A | 26, 27SF | 100% |  |  |  | finish no earlier than 2008-02-29 | 赤羽淳平 | 120h | 120h |
| 207 | 10.1.22.2.4 | AESデコード | 1d? | 2008-04-18 | 2008-04-18 | 202 |  |  | 83d |  |  | 赤羽淳平 | 8h |  |

| ID | WBS | Task | Duration | Start | Finish | Predecessors | Complete | Remaining | Total slack | Free slack | Constraint | Resources | Work | Actual work |
| --- | --- | --- | --- | --- | --- | --- | --- | --- | --- | --- | --- | --- | --- | --- |
| 208 | 10.1.22.2.5 | **Blowfishデコード** | 20d | 2008-02-11 A | 2008-03-02 A |  | 100% |  |  |  |  |  | 240h | 240h |
| 209 | 10.1.22.2.5.1 | カードのコマンド | 15d | 2008-02-11 A | 2008-03-02 A | 26, 27SF | 100% |  |  |  | finish no earlier than 2008-02-29 | 赤羽淳平 | 120h | 120h |
| 210 | 10.1.22.2.5.2 | SRLの先頭2KB | 15d | 2008-02-11 A | 2008-03-02 A | 26, 27SF | 100% |  |  |  |  | 赤羽淳平 | 120h | 120h |
| 211 | 10.1.22.2.6 | **Blowfish鍵管理** | 2d? | 2008-03-06 A | 2008-03-07 A |  | 100% |  |  |  |  |  | 16h | 16h |
| 212 | 10.1.22.2.6.1 | Blowfish鍵の受け渡し | 1d | 2008-03-06 A | 2008-03-06 A | 26, 27SF | 100% |  |  |  | start no earlier than 2008-03-06 | 中島高伸 | 8h | 8h |
| 213 | 10.1.22.2.6.2 | 受け渡された鍵の使用 | 1d? | 2008-03-07 A | 2008-03-07 A | 212 | 100% |  |  |  |  | 赤羽淳平 | 8h | 8h |
| 214 | 10.1.22.2.7 | カードスロットAでの動作 | 1d? | 2008-02-08 A | 2008-02-08 A |  | 100% |  |  |  |  | 赤羽淳平 | 8h | 8h |
| 215 | 10.1.22.2.8 | DMAの使用 | 10d? | 2008-03-03 A | 2008-03-14 A |  | 100% |  |  |  | finish no earlier than 2008-03-14 | 赤羽淳平 | 80h | 80h |
| 216 | 10.1.22.2.9 | 表示との連動 | 50d | 2008-02-11 A | 2008-04-18 | 26, 27SF | 50% | 25d | 83d |  | finish no earlier than 2008-04-18 | 赤羽淳平 | 400h | 200h |
| 217 | 10.1.22.2.10 | 起動との連動 | 50d | 2008-02-11 A | 2008-04-18 | 26, 27SF | 50% | 25d | 83d |  | finish no earlier than 2008-04-18 | 赤羽淳平 | 400h | 200h |
| 218 | 10.1.22.2.11 | 速度チューニング | 10d | 2008-04-21 | 2008-05-02 | 196, 28SF |  |  | 67d |  | finish no earlier than 2008-02-29 | 赤羽淳平 | 80h |  |
| 219 | 10.1.22.3 | **事前動作検証** | 31d? | 2008-03-24 A | 2008-04-23 |  | 47% | 16.53d? | 78d |  |  |  | 568h | 268.8h |
| 220 | 10.1.22.3.1 | 検証項目検討 | 16d? | 2008-03-24 A | 2008-04-14 |  | 70% | 4.8d? | 87d |  | start no earlier than 2008-03-24 | 飯島; 赤羽淳平; 金子 | 384h | 268.8h |
| 221 | 10.1.22.3.2 | 検証開始日ネゴ | 1d | 2008-04-14 | 2008-04-14 |  |  |  | 78d | 0d | start no earlier than 2008-04-14 | 田原明; 赤羽淳平 | 16h |  |
| 222 | 10.1.22.3.3 | 検証 | 7d? | 2008-04-15 | 2008-04-23 | 221 |  |  | 78d |  | finish no earlier than 2008-04-23 | マリオクラブ; 派遣; 赤羽淳平 | 168h |  |
| 223 | 10.1.23 | **ホットスポットサーチ** | 73d | 2008-02-11 A | 2008-04-23 |  | 53% | 34.07d | 78d |  |  |  | 120h | 64h |
| 224 | 10.1.23.1 | ライブラリ作成 | 10d | 2008-02-11 A | 2008-02-22 | 26 | 80% | 2d | 139d |  | start no earlier than 2008-02-08 | ネットワーク開発部 | 80h | 64h |
| 225 | 10.1.23.2 | ランチャーへの組み込み | 5d | 2008-04-17 | 2008-04-23 | 90 |  |  | 78d |  |  | 西川猛司 | 40h |  |
| 226 | 10.1.24 | **ISデバッガ対応** | 83d? | 2008-02-08 A | 2008-04-30 |  | 88% | 10.04d? | 71d |  |  |  | 1392h | 1064h |
| 227 | 10.1.24.1 | 実装 | 39d? | 2008-02-08 A | 2008-04-02 A |  | 100% |  |  |  |  | 中島高伸 | 312h | 312h |
| 228 | 10.1.24.2 | ブラッシュアップ | 20d? | 2008-04-03 A | 2008-04-30 | 227 | 30% | 14d? | 71d |  | finish no earlier than 2008-04-30 | 中島高伸 | 160h | 48h |
| 229 | 10.1.24.3 | **アプリジャンプ対応** | 5d | 2008-04-12 | 2008-04-16 |  |  |  | 85d |  |  | 中島高伸; 吉岡照幸 | 48h |  |
| 230 | 10.1.24.3.1 | ROMヘッダのデバッグ許可フラグを見てJTAG制御を変える | 5d | 2008-04-12 | 2008-04-16 | 303FS+10d |  |  | 85d |  |  |  |  |  |
| 231 | 10.1.24.4 | バナーViewモード対応 | 1d? | 2008-02-08 | 2008-02-08 |  |  |  | 153d |  |  | 中島高伸 | 8h |  |
| 232 | 10.1.24.5 | NTRモードデバッグ | 38d | 2008-02-11 A | 2008-04-02 A | 26, 28SF | 100% |  |  |  | start no earlier than 2008-02-08 | 中島高伸 | 304h | 304h |
| 233 | 10.1.24.6 | TWL-HYBアプリのNTRモードデバッグ | 55d? | 2008-02-08 A | 2008-04-02 A |  | 100% |  |  |  |  |  |  |  |
| 234 | 10.1.24.7 | TLFモードフラグ対応（署名やAESチェックを無効にする） | 55d? | 2008-02-08 A | 2008-04-02 A |  | 100% |  |  |  |  |  |  |  |

| ID | WBS | Task | Duration | Start | Finish | Predecessors | Complete | Remaining | Total slack | Free slack | Constraint | Resources | Work | Actual work |
| --- | --- | --- | --- | --- | --- | --- | --- | --- | --- | --- | --- | --- | --- | --- |
| 235 | 10.1.24.8 | **NANDアプリデバッグ** | 72d | 2008-02-11 A | 2008-04-23 |  | 71% | 20.57d | 79d |  |  |  | 560h | 400h |
| 236 | 10.1.24.8.1 | 暫定対応 | 25d | 2008-02-11 A | 2008-03-16 A | 26, 28SF | 100% |  |  |  |  | 中島高伸; 吉岡照幸 | 400h | 400h |
| 237 | 10.1.24.8.2 | 本対応 | 10d | 2008-04-09 | 2008-04-23 | 236, 29SF |  |  | 79d |  |  | 中島高伸; 吉岡照幸 | 160h |  |
| 238 | 10.2 | **本体設定** | 64d? | 2008-02-08 A | 2008-04-11 |  | 96% | 2.46d? | 90d |  |  |  | 1128h | 1060h |
| 239 | 10.2.1 | **実装** | 64d? | 2008-02-08 A | 2008-04-11 A |  | 100% |  |  |  |  |  | 80h | 80h |
| 240 | 10.2.1.1 | 基本実装 | 1d? | 2008-02-08 A | 2008-02-08 A |  | 100% |  |  |  |  | 吉田光寿 | 8h | 8h |
| 241 | 10.2.1.2 | 無線ON/OFFフラグ制御 | 1d? | 2008-04-11 A | 2008-04-11 A |  | 100% |  |  |  | start no earlier than 2008-04-11 | 西川猛司 | 8h | 8h |
| 242 | 10.2.1.3 | ペアレンタルコントロール設定（仕様確定待ち） | 8d? | 2008-02-21 A | 2008-03-03 A |  | 100% |  |  |  | finish no earlier than 2008-03-03 | 西川猛司 | 64h | 64h |
| 243 | 10.2.2 | **本体設定データ** | 54d | 2008-02-11 A | 2008-04-04 |  | 96% | 2.08d | 97d |  |  |  | 920h | 860h |
| 244 | 10.2.2.1 | **仕様** | 54d | 2008-02-11 A | 2008-04-04 |  | 96% | 2.08d | 97d |  |  |  | 920h | 860h |
| 245 | 10.2.2.1.1 | ペアレンタルコントロール（レーティング以外のデータ構造） | 25d | 2008-02-11 A | 2008-03-16 | 26, 27SF | 90% | 2.5d | 116d |  | finish no earlier than 2008-03-16 | 松島愛佑; 総務部; 三田健太朗 | 600h | 540h |
| 246 | 10.2.2.1.2 | 顔写真 | 40d | 2008-02-11 A | 2008-04-04 A | 26, 27SF | 100% |  |  |  | start no earlier than 2008-02-08 | 正木義文 | 320h | 320h |
| 247 | 10.2.3 | **本体初期化** | 61d? | 2008-02-11 A | 2008-04-11 |  | 94% | 3.81d? | 80d |  |  |  | 128h | 120h |
| 248 | 10.2.3.1 | ライブラリ | 15d | 2008-02-11 A | 2008-03-02 A | 26, 27SF | 100% |  |  |  |  | 神川洋司 | 120h | 120h |
| 249 | 10.2.3.2 | 本体設定での実装 | 1d? | 2008-04-11 | 2008-04-11 |  |  |  | 80d | 2d | start no earlier than 2008-04-11 | 西川猛司 | 8h |  |
| 250 | 10.3 | **X4ボード対応** | 31d | 2008-03-03 A | 2008-04-02 A |  | 100% |  |  |  |  |  | 1104h | 1104h |
| 251 | 10.3.1 | ランチャー | 23d | 2008-03-03 A | 2008-04-02 A | 26, 27SF | 100% |  |  |  | finish no earlier than 2008-02-18 | 中島高伸; 吉田光寿; 吉岡照幸 | 552h | 552h |
| 252 | 10.3.2 | ISデバッガ | 23d | 2008-03-03 A | 2008-04-02 A | 26, 27SF | 100% |  |  |  | finish no earlier than 2008-02-18 | 中島高伸; 吉田光寿; 吉岡照幸 | 552h | 552h |
| 254 | 11 | **UIGシステムメニュー** | 19.5d? | 2008-04-11 | 2008-04-30 |  |  |  | 71d |  |  |  | 216h |  |
| 255 | 11.1 | REDシステムメニューとのマージ作業 | 13.5d? | 2008-04-11 | 2008-04-30 |  |  |  | 71d |  | finish no earlier than 2008-04-30 | 吉岡照幸; 吉田光寿 | 216h |  |
| 257 | 12 | **NANDファーム** | 56d? | 2008-02-08 A | 2008-04-03 A |  | 100% |  |  |  |  | 村上豊 | 352h | 352h |
| 258 | 12.1 | 実装 | 1d? | 2008-02-08 A | 2008-02-08 A |  | 100% |  |  |  |  | 村上豊 | 8h | 8h |
| 259 | 12.2 | HWセキュア情報のランチャーゲームコードを参照してパス解決 | 1d? | 2008-02-08 A | 2008-02-08 A |  | 100% |  |  |  |  | 村上豊 | 8h | 8h |
| 260 | 12.3 | NAND AES暗号仕様変更 | 1d? | 2008-04-02 A | 2008-04-02 A |  | 100% |  |  |  |  | 村上豊 | 8h | 8h |
| 261 | 12.4 | SRL AESデコード修正 | 1d? | 2008-04-03 A | 2008-04-03 A |  | 100% |  |  |  | start no earlier than 2008-04-03 | 村上豊 | 8h | 8h |

| ID | WBS | Task | Duration | Start | Finish | Predecessors | Complete | Remaining | Total slack | Constraint | Resources | Work | Actual work |
| --- | --- | --- | --- | --- | --- | --- | --- | --- | --- | --- | --- | --- | --- |
| 263 | 13 | **マイコン処理** | 64d? | 2008-02-08 A | 2008-04-11 A |  | 100% |  |  |  |  | 776h | 776h |
| 264 | 13.1 | **バッテリエクステンション** | 56d? | 2008-02-08 A | 2008-04-03 A |  | 100% |  |  |  |  | 736h | 736h |
| 265 | 13.1.1 | データ測定 | 31d? | 2008-02-08 A | 2008-03-21 A |  | 100% |  |  | finish no earlier than 2008-03-09 | 藤田僚平; 斉藤潤一 | 416h | 416h |
| 266 | 13.1.2 | 仕様策定 | 19d | 2008-03-10 A | 2008-04-03 A | 265 | 100% |  |  | finish no earlier than 2008-02-29 | 桑原雅人; 村上豊 | 272h | 272h |
| 267 | 13.1.3 | 実装 | 3d | 2008-03-31 A | 2008-04-02 A |  | 100% |  |  | finish no earlier than 2008-02-29 | 村上豊; 藤田僚平 | 48h | 48h |
| 268 | 13.2 | **電源LED変化** | 11d? | 2008-04-01 A | 2008-04-11 A |  | 100% |  |  |  |  | 40h | 40h |
| 269 | 13.2.1 | 仕様決定 | 1d? | 2008-04-01 A | 2008-04-11 A |  | 100% |  |  | finish no earlier than 2008-04-11 | 桑原雅人 | 8h | 8h |
| 270 | 13.2.2 | 実装 | 2d | 2008-04-03 A | 2008-04-04 A | 269 | 100% |  |  | finish no earlier than 2008-04-09 | 村上豊; 藤田僚平 | 32h | 32h |
| 272 | 14 | **eTicket** | 84d? | 2008-02-08 A | 2008-05-01 |  | 50% | 42.08d? | 70d |  |  | 2648h | 1329.6h |
| 273 | 14.1 | **仕様** | 39d? | 2008-02-08 A | 2008-03-17 |  | 97% | 1.28d? | 115d |  |  | 584h | 564.8h |
| 274 | 14.1.1 | 鍵管理 | 21d? | 2008-02-08 A | 2008-03-07 A |  | 100% |  |  | start no earlier than 2008-02-08 | 廣瀬 和樹 | 168h | 168h |
| 275 | 14.1.2 | TitleID | 21d? | 2008-02-08 A | 2008-03-07 A |  | 100% |  |  | start no earlier than 2008-02-08 | 廣瀬 和樹 | 168h | 168h |
| 276 | 14.1.3 | **ネットワークアップデート** | 29d? | 2008-02-18 A | 2008-03-17 |  | 92% | 2.25d? | 115d |  |  | 248h | 228.8h |
| 277 | 14.1.3.1 | ゲームバージョンの運用方法 | 12d? | 2008-02-18 A | 2008-03-04 |  | 80% | 2.4d? | 128d | start no earlier than 2008-02-18 | 廣瀬 和樹 | 96h | 76.8h |
| 278 | 14.1.3.2 | ACアダプタを差した状態でNUPしたらシャットダウンしない保証があるか調査 | 19d? | 2008-02-20 A | 2008-03-17 A |  | 100% |  |  | finish no earlier than 2008-03-07 | 斉藤潤一 | 152h | 152h |
| 279 | 14.2 | **ESライブラリ** | 50d? | 2008-02-08 A | 2008-03-28 |  | 60% | 20d? | 104d |  |  | 864h | 489.6h |
| 280 | 14.2.1 | 実装 | 36d? | 2008-02-08 A | 2008-03-28 |  | 70% | 10.8d? | 104d | finish no earlier than 2008-03-28 | BroadOn | 288h | 201.6h |
| 281 | 14.2.2 | 検証 | 36d? | 2008-02-08 A | 2008-03-28 |  | 50% | 18d? | 104d | finish no earlier than 2008-03-28 | 大島 洋一; 畠本 稔 | 576h | 288h |
| 282 | 14.3 | **NUPライブラリ** | 50d? | 2008-02-08 A | 2008-03-28 |  | 20% | 40d? | 104d |  |  | 576h | 115.2h |
| 283 | 14.3.1 | 実装 | 36d? | 2008-02-08 A | 2008-03-28 |  | 20% | 28.8d? | 104d | finish no earlier than 2008-03-28 | BroadOn | 288h | 57.6h |
| 284 | 14.3.2 | 検証 | 36d? | 2008-02-08 A | 2008-03-28 |  | 20% | 28.8d? | 104d | finish no earlier than 2008-03-28 | 稲葉 公崇 | 288h | 57.6h |
| 285 | 14.4 | **CLSサーバ** | 84d | 2008-02-08 A | 2008-05-01 |  | 18% | 69d | 70d |  |  | 224h | 40h |
| 286 | 14.4.1 | 開発用セットアップ | 5d | 2008-02-08 A | 2008-02-14 A | 26, 27SF | 100% |  |  |  | 畠本 稔 | 40h | 40h |
| 287 | 14.4.2 | 製品用セットアップ | 23d | 2008-04-01 | 2008-05-01 | 26, 29SF |  |  | 70d | start no earlier than 2008-04-01 | 畠本 稔 | 184h |  |

| ID | WBS | Task | Duration | Start | Finish | Predecessors | Complete | Remaining | Total slack | Free slack | Constraint | Resources | Work | Actual work |
| --- | --- | --- | --- | --- | --- | --- | --- | --- | --- | --- | --- | --- | --- | --- |
| 288 | 14.5 | **NUPサーバ** | 72d | 2008-02-11 A | 2008-04-23 |  | 30% | 50.4d | 79d |  |  |  | 400h | 120h |
| 289 | 14.5.1 | 開発用セットアップ | 15d | 2008-02-11 A | 2008-03-02 A | 26, 27SF | 100% |  |  |  |  | ネットワーク開発部 | 120h | 120h |
| 290 | 14.5.2 | 製品用セットアップ | 35d | 2008-03-05 | 2008-04-23 | 26, 29SF |  |  | 79d |  |  | ネットワーク開発部 | 280h |  |
| 291 | 14.6 | **ショップサーバ** | 1d? | 2008-02-08 | 2008-02-08 |  |  |  | 153d |  |  |  |  |  |
| 292 | 14.6.1 | 開発用セットアップ | 1d? | 2008-02-08 | 2008-02-08 |  |  |  | 153d |  |  |  |  |  |
| 293 | 14.6.2 | 製品用セットアップ | 1d? | 2008-02-08 | 2008-02-08 |  |  |  | 153d |  |  |  |  |  |
| 295 | 15 | **TwlSDK** | 113d? | 2008-02-08 A | 2008-05-30 |  | 77% | 25.56d? | 41d |  |  |  | 4056.8h | 3328.8h |
| 296 | 15.1 | **ツール** | 74d? | 2008-02-08 A | 2008-04-21 |  | 38% | 45.93d? | 80d |  |  |  | 464h | 176h |
| 297 | 15.1.1 | **makerom.TWL** | 54d? | 2008-02-08 A | 2008-04-01 |  | 73% | 14.73d? | 100d |  |  |  | 88h | 64h |
| 298 | 15.1.1.1 | **終了分** | 54d? | 2008-02-08 A | 2008-04-01 A |  | 100% |  |  |  |  |  | 64h | 64h |
| 299 | 15.1.1.1.1 | TWL領域用キーテーブル埋め込み | 1d | 2008-03-14 A | 2008-03-14 A | 26, 27SF | 100% |  |  |  | finish no earlier than 2008-03-14 | 吉岡照幸 | 8h | 8h |
| 300 | 15.1.1.1.2 | TMPブート対応ビットの新設 | 1d? | 2008-02-08 A | 2008-02-08 A |  | 100% |  |  |  |  | 吉岡照幸 | 8h | 8h |
| 301 | 15.1.1.1.3 | 鍵アクセスコントロール情報の新設 | 1d? | 2008-03-14 A | 2008-03-14 A | 26, 27SF | 100% |  |  |  | finish no earlier than 2008-03-14 | 吉岡照幸 | 8h | 8h |
| 302 | 15.1.1.1.4 | カードリージョン情報の新設 | 1d? | 2008-03-14 A | 2008-03-14 A | 26, 27SF | 100% |  |  |  | finish no earlier than 2008-03-14 | 吉岡照幸 | 8h | 8h |
| 303 | 15.1.1.1.5 | デバッグ許可フラグの新設 | 1d? | 2008-04-01 A | 2008-04-01 A |  | 100% |  |  |  | start no earlier than 2008-04-01 | 吉岡照幸 | 8h | 8h |
| 304 | 15.1.1.1.6 | システムアプリ用makerom.TWL.sys | 1d | 2008-02-11 A | 2008-02-11 A | 26, 27SF | 100% |  |  |  |  | 吉岡照幸 | 8h | 8h |
| 305 | 15.1.1.1.7 | セキュアアプリ用makerom.TWL.secure | 1d? | 2008-02-08 A | 2008-02-08 A |  | 100% |  |  |  |  | 吉岡照幸 | 8h | 8h |
| 306 | 15.1.1.1.8 | ランチャー用makerom.TWL.launcher | 1d? | 2008-02-08 A | 2008-02-08 A |  | 100% |  |  |  |  | 吉岡照幸 | 8h | 8h |
| 307 | 15.1.1.2 | 領域チェック修正 | 1d | 2008-03-14 | 2008-03-14 | 26, 27SF |  |  | 118d |  | finish no earlier than 2008-03-14 | 吉岡照幸 | 8h |  |
| 308 | 15.1.1.3 | ペアレンタルコントロール対応 | 1d | 2008-03-14 | 2008-03-14 | 26, 27SF |  |  | 118d |  | finish no earlier than 2008-03-14 | 吉岡照幸 | 8h |  |
| 309 | 15.1.1.4 | AES領域を４つに増やす | 1d? | 2008-02-08 | 2008-02-08 |  |  |  | 152d | 2d |  | 吉岡照幸 | 8h |  |
| 310 | 15.1.2 | makerom.NTR.sys（PictoChat、DLダウンロードプレイ用特別版） | 5d | 2008-02-08 | 2008-02-14 |  |  |  | 147d |  |  | 吉岡照幸 | 40h |  |
| 311 | 15.1.3 | **maketad** | 35d | 2008-02-29 | 2008-04-04 |  |  |  | 91d | 0d |  |  | 200h |  |
| 312 | 15.1.3.1 | バイナリファイル対応 | 25d | 2008-02-29 | 2008-04-04 | 26, 28SF |  |  | 91d |  |  | 大島 洋一 | 200h |  |
| 313 | 15.1.4 | maketad.sysmenu | 1d? | 2008-04-03 A | 2008-04-03 A |  | 100% |  |  |  | start no earlier than 2008-04-03 | 畠本 稔 | 8h | 8h |
| 314 | 15.1.5 | SystemMenuUpdater | 3d | 2008-04-17 | 2008-04-21 | 374, 313 |  |  | 80d |  |  | 神川洋司 | 24h |  |

| ID | WBS | Task | Duration | Start | Finish | Predecessors | Complete | Remaining | Total slack | Free slack | Constraint | Resources | Work | Actual work |
| --- | --- | --- | --- | --- | --- | --- | --- | --- | --- | --- | --- | --- | --- | --- |
| 315 | 15.1.6 | **NandInitializer** | 5d? | 2008-02-08 A | 2008-02-12 A |  | 100% |  |  |  |  |  | 56h | 56h |
| 316 | 15.1.6.1 | 特定のファイル以外のクリア | 3d | 2008-02-08 A | 2008-02-12 A |  | 100% |  |  |  |  | 神川洋司 | 24h | 24h |
| 317 | 15.1.6.2 | リージョン変更 | 3d | 2008-02-08 A | 2008-02-12 A |  | 100% |  |  |  |  | 神川洋司 | 24h | 24h |
| 318 | 15.1.6.3 | AESフォーマット対応 | 1d? | 2008-02-08 A | 2008-02-08 A |  | 100% |  |  |  |  | 神川洋司 | 8h | 8h |
| 319 | 15.1.7 | **makebanner.TWL** | 22d? | 2008-02-08 A | 2008-02-29 A |  | 100% |  |  |  |  |  | 40h | 40h |
| 320 | 15.1.7.1 | NTRアイコンIN→TWLバナーOUT対応 | 4d | 2008-02-08 A | 2008-02-13 A | 26, 27SF | 100% |  |  |  |  | 吉岡照幸 | 32h | 32h |
| 321 | 15.1.7.2 | サブバナー対応 | 1d? | 2008-02-29 A | 2008-02-29 A | 26, 27SF | 100% |  |  |  | start no earlier than 2008-02-29 | 吉岡照幸 | 8h | 8h |
| 322 | 15.1.8 | bannercvtr | 1d | 2008-02-08 A | 2008-02-08 A | 26, 28SF | 100% |  |  |  |  | 遠藤高志 | 8h | 8h |
| 323 | 15.2 | **ライブラリ** | 113d? | 2008-02-08 A | 2008-05-30 |  | 85% | 17.48d? | 41d |  |  |  | 3592.8h | 3152.8h |
| 324 | 15.2.1 | reboot | 15d | 2008-02-11 A | 2008-02-29 |  | 90% | 1.5d | 132d |  |  | 中島高伸 | 120h | 108h |
| 325 | 15.2.2 | os/launcherParam | 26d | 2008-02-11 A | 2008-04-22 | 71 | 97% | 0.8d | 78d | 0d | finish no earlier than 2008-04-11 | 吉田光寿 | 208h | 201.6h |
| 326 | 15.2.3 | lcfg | 15d | 2008-02-11 A | 2008-02-29 |  | 90% | 1.5d | 132d |  |  | 吉岡照幸 | 120h | 108h |
| 327 | 15.2.4 | nam | 25d | 2008-02-11 A | 2008-03-14 |  | 90% | 2.5d | 118d |  |  | 畠本 稔 | 200h | 180h |
| 328 | 15.2.5 | マイコン | 15d | 2008-02-11 A | 2008-03-02 A |  | 100% |  |  |  |  | 村上豊 | 120h | 120h |
| 329 | 15.2.6 | カメラ | 25d | 2008-02-11 A | 2008-03-14 |  | 70% | 7.5d | 118d |  |  | 村上豊 | 200h | 140h |
| 330 | 15.2.7 | **Codec** | 110d? | 2008-02-11 A | 2008-05-30 |  | 90% | 11d? | 41d |  |  |  | 1208.8h | 1087.2h |
| 331 | 15.2.7.1 | 全機能実装 | 55d | 2008-02-11 A | 2008-04-25 |  | 90% | 5.5d | 76d |  | finish no earlier than 2008-04-25 | 神川洋司; 照井 章生 | 872.8h | 784.8h |
| 332 | 15.2.7.2 | チューニング | 42d? | 2008-04-03 A | 2008-05-30 |  | 90% | 4.2d? | 41d |  | start no earlier than 2008-04-03 | 神川洋司 | 336h | 302.4h |
| 333 | 15.2.8 | **FS** | 56d? | 2008-02-08 A | 2008-04-04 |  | 75% | 14.27d? | 98d |  |  |  | 1416h | 1208h |
| 334 | 15.2.8.1 | **電源OFF,リセット時の終端処理** | 46d? | 2008-02-08 A | 2008-03-24 |  | 50% | 23d? | 107d | 0d |  |  | 16h | 8h |
| 335 | 15.2.8.1.1 | 実機向け実装 | 1d? | 2008-03-24 A | 2008-03-24 A |  | 100% |  |  |  | start no earlier than 2008-03-24 | 吉崎 浩二 | 8h | 8h |
| 336 | 15.2.8.1.2 | デバッガ向け追加処理（ハートビート処理） | 1d? | 2008-02-08 | 2008-02-08 |  |  |  | 152d |  |  | 吉崎 浩二 | 8h |  |
| 337 | 15.2.8.2 | FSのAES暗号化 | 25d | 2008-02-11 A | 2008-03-16 A | 26, 28SF | 100% |  |  |  |  | 白井達広; 村上豊 | 400h | 400h |
| 338 | 15.2.8.3 | 速度チューニング | 25d | 2008-02-29 A | 2008-04-04 | 26, 28SF | 50% | 12.5d | 98d |  |  | 吉崎 浩二 | 200h | 100h |
| 339 | 15.2.8.4 | SRLのハッシュチェック | 25d | 2008-02-11 A | 2008-04-04 | 26, 28SF | 50% | 12.5d | 98d |  |  | 吉崎 浩二 | 200h | 100h |
| 340 | 15.2.8.5 | NANDアクセス権管理 | 25d | 2008-02-11 A | 2008-03-16 A | 26, 28SF | 100% |  |  |  |  | 吉崎 浩二; 吉岡照幸; 廣瀬 和樹 | 600h | 600h |

| ID | WBS | Task | Duration | Start | Finish | Predecessors | Complete | Remaining | Total slack | Free slack | Constraint | Resources | Work | Actual work |
| --- | --- | --- | --- | --- | --- | --- | --- | --- | --- | --- | --- | --- | --- | --- |
| 342 | 16 | **WiFi関係ライブラリ** | 36d? | 2008-02-08 A | 2008-03-14 |  | 84% | 5.88d? | 118d |  |  |  | 632h | 558.4h |
| 343 | 16.1 | ncfgライブラリ | 1d? | 2008-02-08 A | 2008-02-08 A |  | 100% |  |  |  |  | 清木 昌 | 8h | 8h |
| 344 | 16.2 | WPAを使ったAOSSの接続情報の保存 | 1d? | 2008-02-08 | 2008-02-08 |  |  |  | 153d |  |  | Buffalo外注 | 8h |  |
| 345 | 16.3 | WPAを使ったらくらくの接続情報の保存 | 1d? | 2008-02-08 | 2008-02-08 |  |  |  | 153d |  |  | NEC外注 | 8h |  |
| 346 | 16.4 | **ACライブラリ** | 29d? | 2008-02-08 A | 2008-03-07 |  | 77% | 6.63d? | 125d |  |  |  | 168h | 129.6h |
| 347 | 16.4.1 | 1stリリース | 9d? | 2008-02-08 A | 2008-02-20 A |  | 100% |  |  |  | start no earlier than 2008-02-08 | ネットワーク開発部 | 72h | 72h |
| 348 | 16.4.2 | FIX | 12d | 2008-02-21 A | 2008-03-07 | 347 | 60% | 4.8d | 125d |  | start no earlier than 2008-02-21 | ネットワーク開発部 | 96h | 57.6h |
| 349 | 16.5 | **WiFi設定** | 0.5d? | 2008-02-08 A | 2008-02-08 |  | 30% | 0.35d? | 153.5d |  |  |  | 16h | 4.8h |
| 350 | 16.5.1 | WiFi設定移行ルーチン仕様 | 0.5d? | 2008-02-08 A | 2008-02-08 |  | 30% | 0.35d? | 153.5d |  |  | 水口裕基; ネットワーク開発部 | 8h | 2.4h |
| 351 | 16.5.2 | MTUなどの設定項目仕様 | 0.5d? | 2008-02-08 A | 2008-02-08 |  | 30% | 0.35d? | 153.5d |  |  | 水口裕基; ネットワーク開発部 | 8h | 2.4h |
| 352 | 16.6 | WiFi設定移行 | 1d? | 2008-02-08 | 2008-02-08 |  |  |  | 153d |  |  | ネットワーク開発部 | 8h |  |
| 353 | 16.7 | WiFi設定ユーティリティ | 26d? | 2008-02-08 A | 2008-03-14 A |  | 100% |  |  |  | finish no earlier than 2008-03-14 | 安達 洋明; 清木 昌 | 416h | 416h |
| 355 | 17 | **ROMマスター作成** | 110d? | 2008-02-11 A | 2008-05-30 |  | 56% | 48.12d? | 41d |  |  |  | 296h | 144h |
| 356 | 17.1 | **ROMマスタリングツール** | 110d? | 2008-02-11 A | 2008-05-30 |  | 75% | 27.5d? | 41d |  |  |  | 232h | 144h |
| 357 | 17.1.1 | 初期仕様実装 | 18d? | 2008-02-25 A | 2008-03-19 A |  | 100% |  |  |  | finish no earlier than 2008-03-19 | 西川猛司 | 144h | 144h |
| 358 | 17.1.2 | AES拡張 | 1d? | 2008-02-11 | 2008-02-11 | 309 |  |  | 150d |  |  | 西川猛司 | 8h |  |
| 359 | 17.1.3 | 仕様再検討（鍵をハードウェア内に入れるとか） | 5d | 2008-05-26 | 2008-05-30 |  |  |  | 39d |  | start no earlier than 2008-05-26 | 宮本昌幸; 吉岡照幸 | 80h |  |
| 360 | 17.2 | TWLカードのTWL領域用キーテーブル生成ツール | 8d | 2008-04-21 | 2008-04-30 | 26, 29SF |  |  | 71d |  | start no earlier than 2008-04-21 | 中島高伸 | 64h |  |
| 362 | 18 | **デバッグ関係** | 10d? | 2008-04-21 | 2008-04-30 |  |  |  | 71d |  |  |  | 224h |  |
| 363 | 18.1 | デバッグ項目洗い出し | 8d | 2008-04-21 | 2008-04-30 |  |  |  | 71d |  | finish no earlier than 2008-04-30 | 田原明; 三田健太朗; 吉岡照幸 | 192h |  |
| 364 | 18.2 | 必要となるプログラム洗い出し | 2d? | 2008-04-21 | 2008-04-22 |  |  |  | 73d | 2d | start no earlier than 2008-04-21 | 吉岡照幸; 吉田光寿 | 32h |  |
| 365 | 18.3 | テストプログラム作成 | 6d? | 2008-04-25 | 2008-04-30 | 364 |  |  | 71d |  | finish no earlier than 2008-04-30 |  |  |  |
| 367 | 19 | **ISデバッガ** | 78d? | 2008-02-08 | 2008-04-25 |  |  |  | 76d |  |  |  | 120h |  |
| 368 | 19.1 | 開発マイルストーンをまとめる | 1d? | 2008-02-08 | 2008-02-08 |  |  |  | 153d |  |  | ？ | 8h |  |
| 369 | 19.2 | 開発用カード、製品用カード動作をどのように対応するか？ | 1d? | 2008-02-08 | 2008-02-08 |  |  |  | 153d |  |  | ？ | 8h |  |
| 370 | 19.3 | デバッガ、キャプチャで、開発用SRL、製品用SRLをどのように動作させるか？ | 1d? | 2008-02-08 | 2008-02-08 |  |  |  | 153d |  |  | ？ | 8h |  |
| 371 | 19.4 | システムアップデートをどのようにサポートするか？ | 1d? | 2008-02-08 | 2008-02-08 |  |  |  | 153d |  |  | ？ | 8h |  |
| 372 | 19.5 | リージョン変更の対応 | 1d? | 2008-02-08 | 2008-02-08 |  |  |  | 153d |  |  |  |  |  |

| ID | WBS | Task | Duration | Start | Finish | Predecessors | Complete | Remaining | Total slack | Free slack | Constraint | Resources | Work | Actual work |
| --- | --- | --- | --- | --- | --- | --- | --- | --- | --- | --- | --- | --- | --- | --- |
| 373 | 19.6 | **NANDアプリインポート方法（NMenuのみに制限？）** | 12d | 2008-04-14 | 2008-04-25 |  |  |  | 74d |  |  |  | 80h |  |
| 374 | 19.6.1 | NandAppInporter | 3d | 2008-04-14 | 2008-04-16 |  |  |  | 74d | 0d | start no earlier than 2008-04-14 | 神川洋司 | 24h |  |
| 375 | 19.6.2 | デバッガのROMエミュレーション情報の対応 | 5d | 2008-04-17 | 2008-04-23 | 374 |  |  | 76d | 0d |  | IS | 40h |  |
| 376 | 19.6.3 | ランチャーの対応 | 2d | 2008-04-24 | 2008-04-25 | 375 |  |  | 76d |  |  | 中島高伸 | 16h |  |
| 377 | 19.7 | HWリセット対応 | 1d? | 2008-03-25 | 2008-03-25 | 334 |  |  | 107d |  |  | IS | 8h |  |
| 379 | 20 | **生産工程用プログラム** | 113d? | 2008-02-08 A | 2008-05-30 |  | 25% | 85.27d? | 41d |  |  |  | 992.95h | 212h |
| 380 | 20.1 | 必要となるプログラム洗い出し | 51d? | 2008-02-08 A | 2008-04-18 |  | 50% | 25.5d? | 83d |  | finish no earlier than 2008-04-18 | 製品技術部; 宮本昌幸; 吉岡照幸 | 536.95h | 204h |
| 381 | 20.2 | SDカードダイレクトブート | 1d? | 2008-04-02 A | 2008-04-02 A |  | 100% |  |  |  |  | 村上豊 | 8h | 8h |
| 382 | 20.3 | **生産工程用RED仮ランチャー** | 34d | 2008-04-21 | 2008-05-25 |  |  |  | 47d |  |  |  | 160h |  |
| 383 | 20.3.1 | 仕様FIX | 10d | 2008-04-21 | 2008-05-02 |  |  |  | 53d | 9d | start no earlier than 2008-04-21 | 製品技術部 | 80h |  |
| 384 | 20.3.2 | 実装 | 10d | 2008-05-12 | 2008-05-25 | 383, 14SF-10d |  |  | 46d |  |  | ？ | 80h |  |
| 385 | 20.4 | 生産工程用プログラムの開発サポート | 35d? | 2008-04-14 | 2008-05-30 |  |  |  | 39d |  | finish no earlier than 2008-05-30 | 神川洋司 | 280h |  |
| 386 | 20.5 | 指定したTitleIDのタイトルをシステムアプリでも消去できるAPI | 1d? | 2008-04-30 | 2008-04-30 |  |  |  | 71d |  | start no earlier than 2008-04-30 | 神川洋司 | 8h |  |
